# ANARI CTS 1.0

How a schedule from MS Project changed from version to version. A marks actual dates.

## Version 1 (saved 2022-07-28)

Note of the change: Upload project plan draft

| ID | WBS | Task | Duration | Start | Finish | Predecessors | Total float |
| --- | --- | --- | --- | --- | --- | --- | --- |
| 1 | 1 | **Project Setup** | 10d? | 2022-09-12 | 2022-09-23 |  |  |
| 2 | 1.1 | **Setup architecture** | 2d? | 2022-09-12 | 2022-09-13 |  | 8d |
| 3 |  | Setup ANARI SDK | 1d? | 2022-09-12 | 2022-09-12 |  | 8d |
| 4 |  | Setup C++ Wrapper | 1d? | 2022-09-12 | 2022-09-12 |  | 8d |
| 5 |  | Setup Python | 1d? | 2022-09-12 | 2022-09-12 |  | 8d |
| 6 |  | Setup pybind11 | 1d? | 2022-09-13 | 2022-09-13 | 4, 5, 3 | 8d |
| 7 | 2 | **Implementation Phase** | 4d | 2022-09-26 | 2022-09-29 | 1 | 0d |
| 8 | 2.1 | **Render a set of known test scenes** | 2d | 2022-09-26 | 2022-09-27 |  | 0d |
| 9 |  | Define test scene format | 1d | 2022-09-26 | 2022-09-26 |  | 1d |
| 10 | 2.1.2 | **Render test scenes** | 2d | 2022-09-26 | 2022-09-27 |  | 0d |
| 11 |  | Write Python API | 1d | 2022-09-26 | 2022-09-26 |  | 0d |
| 12 |  | Write C++ backend | 1d | 2022-09-26 | 2022-09-26 |  | 0d |
| 13 |  | Connect via pybind11 | 1d | 2022-09-27 | 2022-09-27 | 11, 12 | 0d |
| 14 | 2.2 | **Image comparison “smoke tests”** | 2d | 2022-09-28 | 2022-09-29 | 8 | 0d |
| 15 |  | Compare ground truth with test renderings | 1d | 2022-09-28 | 2022-09-28 |  | 0d |
| 16 |  | Compile PDF report | 1d | 2022-09-29 | 2022-09-29 | 15 | 0d |
| 17 | 2.3 | **Verification of object/parameter info metadata** | 2d | 2022-09-26 | 2022-09-27 |  | 2d |
| 18 |  | Write Python API | 1d | 2022-09-26 | 2022-09-26 |  | 2d |
| 19 |  | Write C++ backend | 1d | 2022-09-26 | 2022-09-26 |  | 2d |
| 20 |  | Connect via pybind11 | 1d | 2022-09-27 | 2022-09-27 | 18, 19 | 2d |
| 21 | 2.4 | **Verification of known object properties** | 2d | 2022-09-26 | 2022-09-27 |  | 2d |
| 22 |  | Write Python API | 1d | 2022-09-26 | 2022-09-26 |  | 2d |
| 23 |  | Write C++ backend | 1d | 2022-09-26 | 2022-09-26 |  | 2d |
| 24 |  | Connect via pybind11 | 1d | 2022-09-27 | 2022-09-27 | 22, 23 | 2d |
| 25 | 2.5 | **List core extensions implemented by a device** | 2d | 2022-09-26 | 2022-09-27 |  | 2d |
| 26 |  | Write Python API | 1d | 2022-09-26 | 2022-09-26 |  | 2d |
| 27 |  | Write C++ backend | 1d | 2022-09-26 | 2022-09-26 |  | 2d |
| 28 |  | Connect via pybind11 | 1d | 2022-09-27 | 2022-09-27 | 26, 27 | 2d |
| 29 | 2.6 | **Aggregate test results** | 2d | 2022-09-26 | 2022-09-27 |  | 2d |
| 30 |  | Call all Python API functions | 1d | 2022-09-26 | 2022-09-26 |  | 2d |
| 31 |  | Compile PDF with all results | 1d | 2022-09-27 | 2022-09-27 | 30 | 2d |
| 32 | 3 | **Beta** | 1d | 2022-09-30 | 2022-09-30 | 7 | 0d |
| 33 |  | Bug fixing | 1d | 2022-09-30 | 2022-09-30 |  | 0d |
| 34 |  | Write tests | 1d | 2022-09-30 | 2022-09-30 |  | 0d |
| 35 | 4 | **Release Candidate** | 1d | 2022-10-03 | 2022-10-03 | 32 | 0d |
| 36 |  | Bug fixing | 1d | 2022-10-03 | 2022-10-03 |  | 0d |
| 37 |  | Write examples | 1d | 2022-10-03 | 2022-10-03 |  | 0d |
| 38 | 5 | **Release** | 1d | 2022-10-04 | 2022-10-04 | 35 | 0d |
| 39 |  | Documentation | 1d | 2022-10-04 | 2022-10-04 |  | 0d |
| 40 |  | Final testing and bugfixing | 1d | 2022-10-04 | 2022-10-04 |  | 0d |
| 41 |  | Maintanance | 1d? | 2022-10-05 | 2022-10-05 | 38 | 0d |
| 42 |  | ANARI CTS 1.0 complete | 0d | 2022-10-05 | 2022-10-05 | 41 | 0d |

## Version 2 (saved 2022-07-28)

Note of the change: Update project plan

Last finish 2022-10-05 → 2022-10-18 (+13d).

Added:

| ID | Task | Duration | Start | Finish | Predecessors |
| --- | --- | --- | --- | --- | --- |
| 10 | **Geometries generation** | 1d? | 2022-09-27 | 2022-09-27 | 9 |
| 11 | **Triangle** | 1d? | 2022-09-27 | 2022-09-27 |  |
| 12 | Plane | 1d? | 2022-09-27 | 2022-09-27 |  |
| 13 | Cube | 1d? | 2022-09-27 | 2022-09-27 |  |
| 14 | Sphere | 1d? | 2022-09-27 | 2022-09-27 |  |
| 15 | Torus | 1d? | 2022-09-27 | 2022-09-27 |  |
| 16 | Wavefront OBJ | 1d? | 2022-09-27 | 2022-09-27 |  |
| 17 | **Quad** | 1d? | 2022-09-27 | 2022-09-27 |  |
| 18 | Plane | 1d? | 2022-09-27 | 2022-09-27 |  |
| 19 | Cube | 1d? | 2022-09-27 | 2022-09-27 |  |
| 20 | Sphere | 1d? | 2022-09-27 | 2022-09-27 |  |
| 21 | **Curve** | 1d? | 2022-09-27 | 2022-09-27 |  |
| 22 | Pipe | 1d? | 2022-09-27 | 2022-09-27 |  |
| 23 | Cone | 1d? | 2022-09-27 | 2022-09-27 |  |
| 24 | Cylinder | 1d? | 2022-09-27 | 2022-09-27 |  |
| 50 | Fine tune features | 1d? | 2022-10-04 | 2022-10-04 |  |
| 56 | Demonstration | 1d? | 2022-10-04 | 2022-10-04 |  |

Changed:

| ID | Task | Start | Finish | Duration | Total float | Predecessors | Other |
| --- | --- | --- | --- | --- | --- | --- | --- |
| 7 | **Implementation Phase** |  | 2022-09-29 → 2022-10-03 (+4d) | 4d → 6d? | 0d → 7d |  |  |
| 8 | **Render a set of known test scenes** |  | 2022-09-27 → 2022-09-29 (+2d) | 2d → 4d? | 0d → 7d |  |  |
| 9 | Define test scene format |  |  | 1d → 1d? | 1d → 7d |  |  |
| 25 | **Render test scenes** | 2022-09-26 → 2022-09-28 (+2d) | 2022-09-27 → 2022-09-29 (+2d) | 2d → 2d? | 0d → 7d | none → 9, 10 |  |
| 26 | Write Python API | 2022-09-26 → 2022-09-28 (+2d) | 2022-09-26 → 2022-09-28 (+2d) | 1d → 1d? | 0d → 7d |  |  |
| 27 | Write C++ backend | 2022-09-26 → 2022-09-28 (+2d) | 2022-09-26 → 2022-09-28 (+2d) | 1d → 1d? | 0d → 7d |  |  |
| 28 | Connect via pybind11 | 2022-09-27 → 2022-09-29 (+2d) | 2022-09-27 → 2022-09-29 (+2d) | 1d → 1d? | 0d → 7d |  |  |
| 29 | **Image comparison “smoke tests”** | 2022-09-28 → 2022-09-30 (+2d) | 2022-09-29 → 2022-10-03 (+4d) | 2d → 2d? | 0d → 7d |  |  |
| 30 | Compare ground truth with test renderings | 2022-09-28 → 2022-09-30 (+2d) | 2022-09-28 → 2022-09-30 (+2d) | 1d → 1d? | 0d → 7d |  |  |
| 31 | Compile PDF report | 2022-09-29 → 2022-10-03 (+4d) | 2022-09-29 → 2022-10-03 (+4d) | 1d → 1d? | 0d → 7d |  |  |
| 32 | **Verification of object/parameter info metadata** |  |  | 2d → 2d? | 2d → 11d |  |  |
| 33 | Write Python API |  |  | 1d → 1d? | 2d → 11d |  |  |
| 34 | Write C++ backend |  |  | 1d → 1d? | 2d → 11d |  |  |
| 35 | Connect via pybind11 |  |  | 1d → 1d? | 2d → 11d |  |  |
| 36 | **Verification of known object properties** |  |  | 2d → 2d? | 2d → 11d |  |  |
| 37 | Write Python API |  |  | 1d → 1d? | 2d → 11d |  |  |
| 38 | Write C++ backend |  |  | 1d → 1d? | 2d → 11d |  |  |
| 39 | Connect via pybind11 |  |  | 1d → 1d? | 2d → 11d |  |  |
| 40 | **List core extensions implemented by a device** |  |  | 2d → 2d? | 2d → 11d |  |  |
| 41 | Write Python API |  |  | 1d → 1d? | 2d → 11d |  |  |
| 42 | Write C++ backend |  |  | 1d → 1d? | 2d → 11d |  |  |
| 43 | Connect via pybind11 |  |  | 1d → 1d? | 2d → 11d |  |  |
| 44 | **Aggregate test results** |  |  | 2d → 2d? | 2d → 11d |  |  |
| 45 | Call all Python API functions |  |  | 1d → 1d? | 2d → 11d |  |  |
| 46 | Compile PDF with all results |  |  | 1d → 1d? | 2d → 11d |  |  |
| 47 | **Beta** | 2022-09-30 → 2022-10-04 (+4d) | 2022-09-30 → 2022-10-04 (+4d) | 1d → 1d? | 0d → 7d |  |  |
| 48 | Bug fixing | 2022-09-30 → 2022-10-04 (+4d) | 2022-09-30 → 2022-10-04 (+4d) | 1d → 1d? | 0d → 7d |  |  |
| 49 | Write tests | 2022-09-30 → 2022-10-04 (+4d) | 2022-09-30 → 2022-10-04 (+4d) | 1d → 1d? | 0d → 7d |  |  |
| 51 | **Release Candidate** | 2022-10-03 → 2022-10-05 (+2d) | 2022-10-03 → 2022-10-05 (+2d) | 1d → 1d? | 0d → 7d |  |  |
| 52 | Bug fixing | 2022-10-03 → 2022-10-05 (+2d) | 2022-10-03 → 2022-10-05 (+2d) | 1d → 1d? | 0d → 7d |  |  |
| 53 | Write examples | 2022-10-03 → 2022-10-05 (+2d) | 2022-10-03 → 2022-10-05 (+2d) | 1d → 1d? | 0d → 7d |  |  |
| 54 | **Release** |  | 2022-10-04 → 2022-10-17 (+13d) | 1d → 10d? | 0d → none |  |  |
| 55 | Documentation |  |  | 1d → 1d? | 0d → 9d |  |  |
| 57 | ANARI CTS 1.0 complete | 2022-10-05 → 2022-10-17 (+12d) | 2022-10-05 → 2022-10-17 (+12d) |  | 0d → 1d | 58 → 54 |  |
| 58 | **Maintenance** | 2022-10-05 → 2022-10-18 (+13d) | 2022-10-05 → 2022-10-18 (+13d) |  |  |  | was named Maintanance |
| 59 | Follow-up bugfixing | 2022-10-04 → 2022-10-18 (+14d) | 2022-10-04 → 2022-10-18 (+14d) | 1d → 1d? |  |  | was named Final testing and bugfixing |

## Version 3 (saved 2022-07-28)

Note of the change: Update scene generation in project plan

Last finish stays 2022-10-18.

Added:

| ID | Task | Duration | Start | Finish |
| --- | --- | --- | --- | --- |
| 10 | Generate with all (viable) permutations | 1d? | 2022-09-26 | 2022-09-26 |
| 13 | Triangle | 1d? | 2022-09-27 | 2022-09-27 |

Removed: 14 Sphere; 15 Torus; 16 Wavefront OBJ

Changed:

| ID | Task | Start | Finish | Duration | Total float | Predecessors |
| --- | --- | --- | --- | --- | --- | --- |
| 7 | **Implementation Phase** |  | 2022-10-03 → 2022-10-05 (+2d) | 6d? → 8d? | 7d → 5d |  |
| 11 | **Geometries generation** |  |  |  | 7d → 5d | 9 → 10, 9 |
| 24 | **Render test scenes** |  |  |  | 7d → 5d | 9, 11 → 10, 11, 9 |
| 35 | **Verification of known object properties** | 2022-09-26 → 2022-09-30 (+4d) | 2022-09-27 → 2022-10-03 (+6d) |  | 11d → 5d | none → 8 |
| 36 | Write Python API | 2022-09-26 → 2022-09-30 (+4d) | 2022-09-26 → 2022-09-30 (+4d) |  | 11d → 5d |  |
| 37 | Write C++ backend | 2022-09-26 → 2022-09-30 (+4d) | 2022-09-26 → 2022-09-30 (+4d) |  | 11d → 5d |  |
| 38 | Connect via pybind11 | 2022-09-27 → 2022-10-03 (+6d) | 2022-09-27 → 2022-10-03 (+6d) |  | 11d → 5d |  |
| 43 | **Aggregate test results** | 2022-09-26 → 2022-10-04 (+8d) | 2022-09-27 → 2022-10-05 (+8d) |  | 11d → 5d | none → 8, 24, 28, 31, 35, 39 |
| 44 | Call all Python API functions | 2022-09-26 → 2022-10-04 (+8d) | 2022-09-26 → 2022-10-04 (+8d) |  | 11d → 5d |  |
| 45 | Compile PDF with all results | 2022-09-27 → 2022-10-05 (+8d) | 2022-09-27 → 2022-10-05 (+8d) |  | 11d → 5d |  |
| 46 | **Beta** | 2022-10-04 → 2022-10-06 (+2d) | 2022-10-04 → 2022-10-06 (+2d) |  | 7d → 5d |  |
| 47 | Bug fixing | 2022-10-04 → 2022-10-06 (+2d) | 2022-10-04 → 2022-10-06 (+2d) |  | 7d → 5d |  |
| 48 | Write tests | 2022-10-04 → 2022-10-06 (+2d) | 2022-10-04 → 2022-10-06 (+2d) |  | 7d → 5d |  |
| 49 | Fine tune features | 2022-10-04 → 2022-10-06 (+2d) | 2022-10-04 → 2022-10-06 (+2d) |  | 7d → 5d |  |
| 50 | **Release Candidate** | 2022-10-05 → 2022-10-07 (+2d) | 2022-10-05 → 2022-10-07 (+2d) |  | 7d → 5d |  |
| 51 | Bug fixing | 2022-10-05 → 2022-10-07 (+2d) | 2022-10-05 → 2022-10-07 (+2d) |  | 7d → 5d |  |
| 52 | Write examples | 2022-10-05 → 2022-10-07 (+2d) | 2022-10-05 → 2022-10-07 (+2d) |  | 7d → 5d |  |

## Version 4 (saved 2022-07-29)

Note of the change: Update project plan

Last finish 2022-10-18 → 2022-11-11 (+24d).

Added:

| ID | Task | Duration | Start | Finish |
| --- | --- | --- | --- | --- |
| 16 | Quad | 0.5d | 2022-09-20 08:00 | 2022-09-20 12:00 |

Removed: 17 Plane; 21 Pipe

Changed:

| ID | Task | Start | Finish | Duration | Total float | Predecessors |
| --- | --- | --- | --- | --- | --- | --- |
| 1 | **Project Setup** | 2022-09-12 → 2022-09-12 08:00 | 2022-09-23 → 2022-09-16 17:00 (-7d) | 10d? → 5d |  |  |
| 2 | **Setup architecture** | 2022-09-12 → 2022-09-12 08:00 | 2022-09-13 → 2022-09-14 17:00 (+1d) | 2d? → 3d | 13d → 16d |  |
| 3 | Setup ANARI SDK | 2022-09-12 → 2022-09-12 08:00 | 2022-09-12 → 2022-09-12 12:00 | 1d? → 0.5d | 17d → 16.5d |  |
| 4 | Setup C++ Wrapper | 2022-09-12 → 2022-09-12 08:00 | 2022-09-12 → 2022-09-12 17:00 | 1d? → 1d | 17d → 16d |  |
| 5 | Setup Python | 2022-09-12 → 2022-09-12 08:00 | 2022-09-12 → 2022-09-12 17:00 | 1d? → 1d | 17d → 16d |  |
| 6 | Setup pybind11 | 2022-09-13 → 2022-09-13 08:00 | 2022-09-13 → 2022-09-14 17:00 (+1d) | 1d? → 2d | 17d → 16d |  |
| 7 | **Implementation Phase** | 2022-09-26 → 2022-09-19 08:00 (-7d) | 2022-10-05 → 2022-10-07 17:00 (+2d) | 8d? → 15d | 5d → none |  |
| 8 | **Render a set of known test scenes** | 2022-09-26 → 2022-09-19 08:00 (-7d) | 2022-09-29 → 2022-09-28 12:00 (-1d) | 4d? → 7.5d | 5d → 14d |  |
| 9 | Define test scene format | 2022-09-26 → 2022-09-19 08:00 (-7d) | 2022-09-26 → 2022-09-19 17:00 (-7d) | 1d? → 1d | 5d → 14d |  |
| 10 | **Geometries generation** | 2022-09-27 → 2022-09-20 08:00 (-7d) | 2022-09-27 → 2022-09-20 17:00 (-7d) | 1d? → 1d | 5d → 14d | 22, 9 → 9 |
| 11 | **Triangle** | 2022-09-27 → 2022-09-20 08:00 (-7d) | 2022-09-27 → 2022-09-20 16:12 (-7d) | 1d? → 0.9d | 5d → 14.1d |  |
| 12 | Triangle | 2022-09-27 → 2022-09-20 08:00 (-7d) | 2022-09-27 → 2022-09-20 10:24 (-7d) | 1d? → 0.3d | 5d → 14.1d |  |
| 13 | Plane | 2022-09-27 → 2022-09-20 10:24 (-7d) | 2022-09-27 → 2022-09-20 13:48 (-7d) | 1d? → 0.3d | 5d → 14.1d | none → 12 |
| 14 | Cube | 2022-09-27 → 2022-09-20 13:48 (-7d) | 2022-09-27 → 2022-09-20 16:12 (-7d) | 1d? → 0.3d | 5d → 14.1d | none → 13, 12 |
| 15 | **Quad** | 2022-09-27 → 2022-09-20 08:00 (-7d) | 2022-09-27 → 2022-09-20 17:00 (-7d) | 1d? → 1d | 5d → 14d |  |
| 17 | Cube | 2022-09-27 → 2022-09-20 13:00 (-7d) | 2022-09-27 → 2022-09-20 17:00 (-7d) | 1d? → 0.5d | 5d → 14d | none → 16 |
| 18 | Sphere | 2022-09-27 → 2022-09-20 08:00 (-7d) | 2022-09-27 → 2022-09-20 17:00 (-7d) | 1d? → 1d | 5d → 14d |  |
| 19 | Curve | 2022-09-27 → 2022-09-20 08:00 (-7d) | 2022-09-27 → 2022-09-20 17:00 (-7d) | 1d? → 1d | 5d → 14d |  |
| 20 | Cone | 2022-09-27 → 2022-09-20 08:00 (-7d) | 2022-09-27 → 2022-09-20 17:00 (-7d) | 1d? → 1d | 5d → 14d |  |
| 21 | Cylinder | 2022-09-27 → 2022-09-20 08:00 (-7d) | 2022-09-27 → 2022-09-20 17:00 (-7d) | 1d? → 1d | 5d → 14d |  |
| 22 | Generate with all (viable) permutations | 2022-09-26 → 2022-09-21 08:00 (-5d) | 2022-09-26 → 2022-09-22 17:00 (-4d) | 1d? → 2d | 5d → 14d | none → 9, 10 |
| 23 | **Render test scenes** | 2022-09-28 → 2022-09-23 08:00 (-5d) | 2022-09-29 → 2022-09-28 12:00 (-1d) | 2d? → 3.5d | 5d → 14d |  |
| 24 | Write Python API | 2022-09-28 → 2022-09-23 08:00 (-5d) | 2022-09-28 → 2022-09-23 12:00 (-5d) | 1d? → 0.5d | 5d → 16.5d |  |
| 25 | Write C++ backend | 2022-09-28 → 2022-09-23 08:00 (-5d) | 2022-09-28 → 2022-09-27 17:00 (-1d) | 1d? → 3d | 5d → 14d |  |
| 26 | Connect via pybind11 | 2022-09-29 → 2022-09-28 08:00 (-1d) | 2022-09-29 → 2022-09-28 12:00 (-1d) | 1d? → 0.5d | 5d → 14d |  |
| 27 | **Image comparison “smoke tests”** | 2022-09-30 → 2022-09-28 13:00 (-2d) | 2022-10-03 → 2022-10-05 12:00 (+2d) | 2d? → 5d | 5d → 14d |  |
| 28 | Compare ground truth with test renderings | 2022-09-30 → 2022-09-28 13:00 (-2d) | 2022-09-30 → 2022-10-03 12:00 (+3d) | 1d? → 3d | 5d → 14d |  |
| 29 | Compile PDF report | 2022-10-03 → 2022-10-03 13:00 | 2022-10-03 → 2022-10-05 12:00 (+2d) | 1d? → 2d | 5d → 14d |  |
| 30 | **Verification of object/parameter info metadata** | 2022-09-26 → 2022-09-19 08:00 (-7d) | 2022-09-27 → 2022-09-20 12:00 (-7d) | 2d? → 1.5d | 9d → 25d |  |
| 31 | Write Python API | 2022-09-26 → 2022-09-19 08:00 (-7d) | 2022-09-26 → 2022-09-19 12:00 (-7d) | 1d? → 0.5d | 9d → 25.5d |  |
| 32 | Write C++ backend | 2022-09-26 → 2022-09-19 08:00 (-7d) | 2022-09-26 → 2022-09-19 17:00 (-7d) | 1d? → 1d | 9d → 25d |  |
| 33 | Connect via pybind11 | 2022-09-27 → 2022-09-20 08:00 (-7d) | 2022-09-27 → 2022-09-20 12:00 (-7d) | 1d? → 0.5d | 9d → 25d |  |
| 34 | **Verification of known object properties** | 2022-09-30 → 2022-09-28 13:00 (-2d) | 2022-10-03 → 2022-09-29 17:00 (-4d) | 2d? → 1.5d | 5d → 17.5d |  |
| 35 | Write Python API | 2022-09-30 → 2022-09-28 13:00 (-2d) | 2022-09-30 → 2022-09-28 17:00 (-2d) | 1d? → 0.5d | 5d → 18d |  |
| 36 | Write C++ backend | 2022-09-30 → 2022-09-28 13:00 (-2d) | 2022-09-30 → 2022-09-29 12:00 (-1d) | 1d? → 1d | 5d → 17.5d |  |
| 37 | Connect via pybind11 | 2022-10-03 → 2022-09-29 13:00 (-4d) | 2022-10-03 → 2022-09-29 17:00 (-4d) | 1d? → 0.5d | 5d → 17.5d |  |
| 38 | **List core extensions implemented by a device** | 2022-09-26 → 2022-09-19 08:00 (-7d) | 2022-09-27 → 2022-09-20 12:00 (-7d) | 2d? → 1.5d | 9d → 25d |  |
| 39 | Write Python API | 2022-09-26 → 2022-09-19 08:00 (-7d) | 2022-09-26 → 2022-09-19 12:00 (-7d) | 1d? → 0.5d | 9d → 25.5d |  |
| 40 | Write C++ backend | 2022-09-26 → 2022-09-19 08:00 (-7d) | 2022-09-26 → 2022-09-19 17:00 (-7d) | 1d? → 1d | 9d → 25d |  |
| 41 | Connect via pybind11 | 2022-09-27 → 2022-09-20 08:00 (-7d) | 2022-09-27 → 2022-09-20 12:00 (-7d) | 1d? → 0.5d | 9d → 25d |  |
| 42 | **Aggregate test results** | 2022-10-04 → 2022-10-05 13:00 (+1d) | 2022-10-05 → 2022-10-07 17:00 (+2d) | 2d? → 2.5d | 5d → 14d |  |
| 43 | Call all Python API functions | 2022-10-04 → 2022-10-05 13:00 (+1d) | 2022-10-04 → 2022-10-05 17:00 (+1d) | 1d? → 0.5d | 5d → 14d |  |
| 44 | Compile PDF with all results | 2022-10-05 → 2022-10-06 08:00 (+1d) | 2022-10-05 → 2022-10-07 17:00 (+2d) | 1d? → 2d | 5d → 14d |  |
| 45 | **Beta** | 2022-10-06 → 2022-10-10 08:00 (+4d) | 2022-10-06 → 2022-10-21 17:00 (+15d) | 1d? → 10d? | 5d → none |  |
| 46 | Bug fixing | 2022-10-06 → 2022-10-10 08:00 (+4d) | 2022-10-06 → 2022-10-11 17:00 (+5d) | 1d? → 2d? | 5d → 16d |  |
| 47 | Write tests | 2022-10-06 → 2022-10-10 08:00 (+4d) | 2022-10-06 → 2022-10-13 17:00 (+7d) | 1d? → 4d | 5d → 14d |  |
| 48 | Fine tune features | 2022-10-06 → 2022-10-10 08:00 (+4d) | 2022-10-06 → 2022-10-11 17:00 (+5d) | 1d? → 2d? | 5d → 16d |  |
| 49 | **Release Candidate** | 2022-10-07 → 2022-10-24 08:00 (+17d) | 2022-10-07 → 2022-10-28 17:00 (+21d) | 1d? → 5d? | 5d → none |  |
| 50 | Bug fixing | 2022-10-07 → 2022-10-24 08:00 (+17d) | 2022-10-07 → 2022-10-25 17:00 (+18d) | 1d? → 2d? | 5d → 8d |  |
| 51 | Write examples | 2022-10-07 → 2022-10-24 08:00 (+17d) | 2022-10-07 → 2022-10-25 17:00 (+18d) | 1d? → 2d? | 5d → 8d |  |
| 52 | **Release** | 2022-10-04 → 2022-10-31 08:00 (+27d) | 2022-10-17 → 2022-11-04 17:00 (+18d) | 10d? → 5d? |  |  |
| 53 | Documentation | 2022-10-04 → 2022-10-31 08:00 (+27d) | 2022-10-04 → 2022-11-03 17:00 (+30d) | 1d? → 4d? | 9d → 5d |  |
| 54 | Demonstration | 2022-10-04 → 2022-10-31 08:00 (+27d) | 2022-10-04 → 2022-10-31 12:00 (+27d) | 1d? → 0.5d? | 9d → 8.5d |  |
| 55 | ANARI CTS 1.0 complete | 2022-10-17 → 2022-11-04 17:00 (+18d) | 2022-10-17 → 2022-11-04 17:00 (+18d) |  | 1d → 5d |  |
| 56 | **Maintenance** | 2022-10-18 → 2022-11-07 08:00 (+20d) | 2022-10-18 → 2022-11-11 17:00 (+24d) | 1d? → 5d? | 0d → none |  |
| 57 | Follow-up bugfixing | 2022-10-18 → 2022-11-07 08:00 (+20d) | 2022-10-18 → 2022-11-07 17:00 (+20d) |  | 0d → 4d |  |

## Version 5 (saved 2022-08-17)

Note of the change: Update estimation

Last finish stays 2022-11-11.

Changed:

| ID | Task | Duration |
| --- | --- | --- |
| 45 | **Beta** | 10d? → 10d |
| 46 | Bug fixing | 2d? → 2d |
| 48 | Fine tune features | 2d? → 2d |
| 49 | **Release Candidate** | 5d? → 5d |
| 50 | Bug fixing | 2d? → 2d |
| 51 | Write examples | 2d? → 2d |
| 52 | **Release** | 5d? → 5d |
| 53 | Documentation | 4d? → 4d |
| 54 | Demonstration | 0.5d? → 0.5d |
| 56 | **Maintenance** | 5d? → 5d |
| 57 | Follow-up bugfixing | 1d? → 1d |
